# 人力平台改造立项与实施计划初步估计

How a schedule from a web Gantt chart changed from version to version. A marks actual dates.

## Version 1 (saved 2024-08-16)

| ID | Task | Duration | Start | Finish | Predecessors |
| --- | --- | --- | --- | --- | --- |
| 2 | 供应商需求评估 | 3d | 2024-08-19 | 2024-08-21 |  |
| 3 | 对改造费用评估结果进行沟通、压降 | 2d | 2024-08-22 | 2024-08-23 | 2 |
| 4 | 人力提交itsm流程，固定需求 | 2d | 2024-08-26 | 2024-08-27 | 3 |
| 5 | 调整现有立项报告，沟通、确认 | 3d | 2024-08-26 | 2024-08-28 | 3 |
| 6 | 提交立项预审 | 3d | 2024-08-29 | 2024-09-02 | 5 |
| 7 | 提交立项流程 | 4d | 2024-09-03 | 2024-09-06 | 6 |
| 8 | 发起采购议题 | 4d | 2024-09-09 | 2024-09-12 | 7 |
| 9 | 采购文件用印 | 3d | 2024-09-13 | 2024-09-17 | 8 |
| 10 | 采购会议排期及采购谈判 | 10d | 2024-09-18 | 2024-10-01 | 9 |
| 11 | 采购会议纪要 | 2d | 2024-10-02 | 2024-10-03 | 10 |
| 12 | 合同拟定、预审、合同签订 | 10d | 2024-10-04 | 2024-10-17 | 11 |

## Version 2 (saved 2024-08-16)

Last finish 2024-10-17 → 2024-12-18 (+62d).

Added:

| ID | Task | Duration | Start | Finish | Predecessors |
| --- | --- | --- | --- | --- | --- |
| 13 | 供应商开发 | 20d | 2024-10-02 | 2024-10-29 | 10 |
| 14 | 供应商自测、修改、完善 | 20d | 2024-10-30 | 2024-11-26 | 13 |
| 15 | 人力部UAT、供应商完善 | 10d | 2024-11-27 | 2024-12-10 | 14 |
| 16 | 上线材料准备 | 3d | 2024-12-11 | 2024-12-13 | 15 |
| 17 | 上线流程发起、上线部署 | 3d | 2024-12-16 | 2024-12-18 | 16 |

## Version 3 (saved 2024-10-28)

Last finish 2024-12-18 → 2025-02-06 (+50d).

Changed:

| ID | Task | Start | Finish | Duration |
| --- | --- | --- | --- | --- |
| 6 | 提交立项预审 |  | 2024-09-02 → 2024-10-22 (+50d) | 3d → 39d |
| 7 | 提交立项流程 | 2024-09-03 → 2024-10-23 (+50d) | 2024-09-06 → 2024-10-28 (+52d) |  |
| 8 | 发起采购议题 | 2024-09-09 → 2024-10-29 (+50d) | 2024-09-12 → 2024-11-01 (+50d) |  |
| 9 | 采购文件用印 | 2024-09-13 → 2024-11-04 (+52d) | 2024-09-17 → 2024-11-06 (+50d) |  |
| 10 | 采购会议排期及采购谈判 | 2024-09-18 → 2024-11-07 (+50d) | 2024-10-01 → 2024-11-20 (+50d) |  |
| 11 | 采购会议纪要 | 2024-10-02 → 2024-11-21 (+50d) | 2024-10-03 → 2024-11-22 (+50d) |  |
| 12 | 合同拟定、预审、合同签订 | 2024-10-04 → 2024-11-25 (+52d) | 2024-10-17 → 2024-12-06 (+50d) |  |
| 13 | 供应商开发 | 2024-10-02 → 2024-11-21 (+50d) | 2024-10-29 → 2024-12-18 (+50d) |  |
| 14 | 供应商自测、修改、完善 | 2024-10-30 → 2024-12-19 (+50d) | 2024-11-26 → 2025-01-15 (+50d) |  |
| 15 | 人力部UAT、供应商完善 | 2024-11-27 → 2025-01-16 (+50d) | 2024-12-10 → 2025-01-29 (+50d) |  |
| 16 | 上线材料准备 | 2024-12-11 → 2025-01-30 (+50d) | 2024-12-13 → 2025-02-03 (+52d) |  |
| 17 | 上线流程发起、上线部署 | 2024-12-16 → 2025-02-04 (+50d) | 2024-12-18 → 2025-02-06 (+50d) |  |

## Version 4 (saved 2024-11-04)

Last finish 2025-02-06 → 2025-02-07 (+1d).

Changed:

| ID | Task | Start | Finish | Duration |
| --- | --- | --- | --- | --- |
| 6 | 提交立项预审 |  | 2024-10-22 → 2024-09-02 (-50d) | 39d → 3d |
| 7 | 提交立项流程 | 2024-10-23 → 2024-09-03 (-50d) | 2024-10-28 → 2024-10-29 (+1d) | 4d → 41d |
| 8 | 发起采购议题 | 2024-10-29 → 2024-10-30 (+1d) | 2024-11-01 → 2024-11-04 (+3d) |  |
| 9 | 采购文件用印 | 2024-11-04 → 2024-11-05 (+1d) | 2024-11-06 → 2024-11-07 (+1d) |  |
| 10 | 采购会议排期及采购谈判 | 2024-11-07 → 2024-11-08 (+1d) | 2024-11-20 → 2024-11-21 (+1d) |  |
| 11 | 采购会议纪要 | 2024-11-21 → 2024-11-22 (+1d) | 2024-11-22 → 2024-11-25 (+3d) |  |
| 12 | 合同拟定、预审、合同签订 | 2024-11-25 → 2024-11-26 (+1d) | 2024-12-06 → 2024-12-02 (-4d) | 10d → 5d |
| 13 | 供应商开发 | 2024-11-21 → 2024-11-22 (+1d) | 2024-12-18 → 2024-12-19 (+1d) |  |
| 14 | 供应商自测、修改、完善 | 2024-12-19 → 2024-12-20 (+1d) | 2025-01-15 → 2025-01-16 (+1d) |  |
| 15 | 人力部UAT、供应商完善 | 2025-01-16 → 2025-01-17 (+1d) | 2025-01-29 → 2025-01-30 (+1d) |  |
| 16 | 上线材料准备 | 2025-01-30 → 2025-01-31 (+1d) | 2025-02-03 → 2025-02-04 (+1d) |  |
| 17 | 上线流程发起、上线部署 | 2025-02-04 → 2025-02-05 (+1d) | 2025-02-06 → 2025-02-07 (+1d) |  |
